# GWTUML

Schedule from GanttProject, 2008-12-04 to 2009-06-26.
Objet Direct
gwtuml is a gwt application to easily draw UML diagrams. The first development step aims to a stable and user friendly class diagram drawer.

## Calendars

- Project calendar: Mon-Fri working; Sat-Sun off. Exceptions (off unless hours are given): 2008-12-08 to 2008-12-10, 2008-12-15 to 2008-12-17, 2008-12-22 to 2008-12-26, 2008-12-29 to 2009-01-02, 2009-01-05 to 2009-01-07, 2009-01-12 to 2009-01-14, 2009-01-19 to 2009-01-21, 2009-01-26 to 2009-01-28, 2009-02-02 to 2009-02-04, 2009-02-09 to 2009-02-11, 2009-02-16 to 2009-02-20, 2009-02-23 to 2009-02-25, 2009-03-02 to 2009-03-04, 2009-03-09 to 2009-03-11, 2009-03-16 to 2009-03-18, 2009-03-23 to 2009-03-25.

## Resources

| Resource | Group |
| --- | --- |
| Henri Darmet |  |
| Florian Mounier | Concepteur Developpeur |

## Schedule

| ID | WBS | Task | Duration | Start | Finish | Predecessors | Complete | Resources |
| --- | --- | --- | --- | --- | --- | --- | --- | --- |
| 1 | 1 | Prototype | 1d | 2008-12-04 | 2008-12-04 |  | 100% | Henri Darmet |
| 2 | 2 | **Internship (PFE)** | 92d | 2008-12-05 | 2009-06-26 | 1 | 18% | Florian Mounier |
| 3 | 2.1 | Dual Education (Alternance) | 27d | 2008-12-05 | 2009-03-27 |  | 65% | Florian Mounier |
| 4 | 2.2 | Full Time | 65d | 2009-03-30 | 2009-06-26 | 3 |  | Florian Mounier |
| 5 | 2.3 | **Project Management** | 92d | 2008-12-05 | 2009-06-26 |  | 12% | Florian Mounier |
| 6 | 2.3.1 | **Project Setup** | 3d | 2008-12-05 | 2008-12-12 | 1 | 100% | Florian Mounier |
| 7 | 2.3.1.1 | Platform setup | 1d | 2008-12-05 | 2008-12-05 |  | 100% | Florian Mounier |
| 8 | 2.3.1.2 | Setting up a temporary svn | 1d | 2008-12-05 | 2008-12-05 |  | 100% | Florian Mounier |
| 9 | 2.3.1.3 | Code Pre-reorganization | 2d | 2008-12-11 | 2008-12-12 | 7, 8 | 100% | Florian Mounier |
| 10 | 2.3.2 | Move project to Google Code | 1d | 2009-01-08 | 2009-01-08 |  | 100% | Florian Mounier |
| 11 | 2.3.3 | Script to compile application for each revision | 1d | 2009-01-09 | 2009-01-09 | 10 | 100% | Florian Mounier |
| 12 | 2.3.4 | Wiki creation | 2d | 2009-02-05 | 2009-02-06 |  | 100% | Florian Mounier |
| 13 | 2.3.5 | Wiki Updating | 77d | 2009-02-12 | 2009-06-26 | 12 | 4% | Florian Mounier |
| 14 | 2.3.6 | Project's Gantt Diagram | 1d | 2009-02-26 | 2009-02-26 |  | 100% | Florian Mounier |
| 15 | 2.3.7 | Midterm internship meeting | 1d | 2009-02-27 | 2009-02-27 | 14 |  | Florian Mounier |
| 16 | 2.4 | **Graphical Layer Abstraction** | 8d | 2008-12-11 | 2009-01-16 |  | 100% | Florian Mounier |
| 17 | 2.4.1 | Set up a bridge for graphic engines | 2d | 2008-12-11 | 2008-12-12 |  | 100% | Florian Mounier |
| 18 | 2.4.2 | Integration of GWT Incubator graphic engine | 6d | 2008-12-18 | 2009-01-16 | 17 | 100% | Florian Mounier |
| 19 | 2.5 | **Visual Interface** | 8d | 2009-01-08 | 2009-01-30 |  | 100% | Florian Mounier |
| 20 | 2.5.1 | Creation | 2d | 2009-01-08 | 2009-01-09 |  | 100% | Florian Mounier |
| 21 | 2.5.2 | Visual Interface Code spearation | 2d | 2009-01-15 | 2009-01-16 | 20 | 100% | Florian Mounier |
| 22 | 2.5.3 | Improvements | 2d | 2009-01-22 | 2009-01-23 | 21 | 100% | Florian Mounier |
| 23 | 2.5.4 | Context Menu | 1d | 2009-01-29 | 2009-01-29 | 22 | 100% | Florian Mounier |
| 24 | 2.5.5 | HTML Loading Screen | 1d | 2009-01-30 | 2009-01-30 | 23 | 100% | Florian Mounier |

Notes:
- 1: Non mesuré

| ID | WBS | Task | Type | Duration | Start | Finish | Predecessors | Complete | Resources |
| --- | --- | --- | --- | --- | --- | --- | --- | --- | --- |
| 25 | 2.6 | **Cleanness of code** |  | 32d | 2009-01-23 | 2009-04-17 |  | 33% | Florian Mounier |
| 26 | 2.6.1 | Code cleanup |  | 32d | 2009-01-23 | 2009-04-17 |  | 30% | Florian Mounier |
| 27 | 2.6.2 | **Code Rewrite** |  | 21d | 2009-01-23 | 2009-04-02 |  | 40% | Florian Mounier |
| 28 | 2.6.2.1 | Dynamic Edition System |  | 15d | 2009-01-23 | 2009-03-20 |  | 42% | Florian Mounier |
| 29 | 2.6.2.2 | Artifacts Drawing |  | 19d | 2009-01-30 | 2009-04-02 |  | 39% | Florian Mounier |
| 30 | 2.7 | Code JavaDoc |  | 25d | 2009-04-06 | 2009-05-08 |  |  | Florian Mounier |
| 31 | 2.8 | **Interaction emulation layer** |  | 7d | 2009-05-11 | 2009-05-19 | 30 |  | Florian Mounier |
| 32 | 2.8.1 | Keyboard Part |  | 2d | 2009-05-11 | 2009-05-12 |  |  | Florian Mounier |
| 33 | 2.8.2 | Mouse Part |  | 2d | 2009-05-13 | 2009-05-14 | 32 |  | Florian Mounier |
| 34 | 2.8.3 | Test code |  | 3d | 2009-05-15 | 2009-05-19 | 33 |  | Florian Mounier |
| 35 | 2.9 | **Adding other UML diagrams** |  | 25d | 2009-05-20 | 2009-06-23 | 31 |  | Florian Mounier |
| 36 | 2.9.1 | Adding object diagram for code generation |  | 25d | 2009-05-20 | 2009-06-23 |  |  | Florian Mounier |
| 37 | 2.9.2 | Adding other UML diagrams | milestone | 0d | 2009-06-23 | 2009-06-23 |  |  | Florian Mounier |
| 38 | 2.10 | Opt : Saving diagram in xml like format | milestone | 0d | 2009-06-24 | 2009-06-24 | 36 |  | Florian Mounier |
| 39 | 2.11 | Opt : Server side saving diagrams like google docs | milestone | 0d | 2009-06-24 | 2009-06-24 | 36 |  | Florian Mounier |
